# MDSS

Schedule from MS Project, 2009-02-02 to 2009-07-08, costs in USD, A marks actual dates.
Misty Heights
Test site is available

## Calendars

- Standard: Mon-Fri 08:00-12:00, 13:00-17:00; Sat-Sun off.

## Resources

| Resource | Group | Rate |
| --- | --- | --- |
| Nathan | Terra Frame | 115 |
| Thomas (Oz) | Terra Frame | 115 |
| Justin | Terra Frame | 115 |
| Darrell | Terra Frame | 115 |
| MRC | Supplier |  |
| Naifeh | Terra Frame |  |
| Marlize | Project |  |
| Mike | Project |  |
| Eric | Terra Frame |  |
| TBD | Terra Frame | 115 |
| Saul | Project |  |
| Sanika | Project |  |
| Lars | Project |  |
| Miguel | Project |  |
| Dave | Project |  |

## Schedule

| ID | WBS | Task | Type | Duration | Start | Finish | Predecessors | Complete | Remaining | Baseline start | Baseline finish | Baseline duration | Total slack | Free slack | Constraint | Resources | Work | Actual work | Cost | Baseline cost | Actual cost | Text1 | Text2 | Text4 | Text3 |
| --- | --- | --- | --- | --- | --- | --- | --- | --- | --- | --- | --- | --- | --- | --- | --- | --- | --- | --- | --- | --- | --- | --- | --- | --- | --- |
| 1 | 1 | **MDSS Implementation** |  | 113d? | 2009-02-02 A | 2009-07-08 |  | 63% | 42.11d? | 2009-02-02 | 2009-05-28 | 83.25d? | 0d |  |  |  | 3431.26h | 1736.57h | 195,799.25 | 257,416.04 | 85,320.3 |  |  |  |  |
| 2 | 1.1 | **Create Prototype (Entomology)** |  | 60d? | 2009-02-02 A | 2009-04-24 |  | 95% | 2.88d? | 2009-02-02 | 2009-03-12 | 28.23d? | 53d |  |  |  | 1318.6h | 1239.6h | 72,979.25 | 74,152.04 | 68,494.25 |  |  |  |  |
| 3 | 1.1.1 | **System requirements** |  | 60d? | 2009-02-02 A | 2009-04-24 |  | 90% | 5.9d? | 2009-02-02 | 2009-03-09 | 26d? | 53d |  |  |  | 755.4h | 676.4h | 43,171.25 | 31,372.04 | 38,686.25 |  |  |  |  |
| 4 | 1.1.1.1 | Dev: Ontology Schema MIRO |  | 15.5d | 2009-02-02 A | 2009-02-23 A |  | 100% |  | 2009-02-02 | 2009-02-09 | 6d |  |  |  | Thomas (Oz) [85%] | 105.4h | 105.4h | 12,121 | 4,692 | 12,121 | SYS08 | 5 days |  |  |
| 5 | 1.1.1.2 | Dev: Geography MOJO attributes (PostGIS phase 1) |  | 20d | 2009-02-02 A | 2009-02-27 A |  | 100% |  | 2009-02-02 | 2009-02-09 | 5.88d? |  |  | finish no earlier than 2009-02-24 | Nathan [85%] | 136h | 136h | 15,640.25 | 4,600.04 | 15,640.25 | SYS03-01 | 7 days |  |  |
| 6 | 1.1.1.3 | Dev: Geography functions integrated into the query API |  | 5d | 2009-03-02 A | 2009-03-06 A | 5 | 100% |  | 2009-02-09 | 2009-02-17 | 5.88d? |  |  | finish no earlier than 2009-03-06 | Nathan [85%] | 34h | 34h | 3,910 | 4,600 | 3,910 | SYS03-02 | 7 days |  |  |
| 7 | 1.1.1.4 | Dev: GIS visual tool integration |  | 8d | 2009-02-02 A | 2009-03-04 A |  | 100% |  | 2009-02-10 | 2009-02-19 | 7.06d? |  |  |  | Naifeh | 64h | 64h |  | 5,520 |  | SYS10 | 6 days |  |  |
| 8 | 1.1.1.5 | Dev: Geoserver integration |  | 8d | 2009-02-12 A | 2009-03-03 A |  | 100% |  | 2009-02-19 | 2009-03-02 | 7.06d? |  |  | finish no earlier than 2009-03-03 | Naifeh | 64h | 64h |  | 5,520 |  | SYS11 | 6 days |  |  |
| 9 | 1.1.1.6 | Dev: DHTML tree widget selection and integration |  | 8.5d | 2009-02-11 A | 2009-02-23 A |  | 100% |  | 2009-02-11 | 2009-02-17 | 5d? |  |  | start no earlier than 2009-02-11 | Naifeh | 68h | 68h |  |  |  | SYS02 | 5 days | 10 |  |
| 10 | 1.1.1.7 | Dev: import/export an XLS file with a pre-populated headers |  | 11d | 2009-02-11 A | 2009-02-25 A |  | 100% |  | 2009-02-11 | 2009-02-18 | 6d? |  |  | start no earlier than 2009-02-11 | Eric | 88h | 88h |  |  |  | SYS04-01 | 2 days | 11 |  |
| 11 | 1.1.1.8 | Dev: Import XLS file. Map column headers to fields of a class |  | 2d? | 2009-02-20 A | 2009-02-23 A | 10 | 100% |  | 2009-02-19 | 2009-02-20 | 2d? |  |  |  | Eric | 16h | 16h |  |  |  | SYS04-02 | 2 days | 12 |  |
| 12 | 1.1.1.9 | Dev: Represent query criteria in back-end |  | 6d? | 2009-03-09 A | 2009-03-16 A | 6 | 100% |  | 2009-02-25 | 2009-03-03 | 5d? |  |  | finish no earlier than 2009-03-16 | Nathan | 48h | 48h | 5,520 |  | 5,520 | SYS06 | 5 days | 14 |  |
| 13 | 1.1.1.10 | Dev: Save query criteria to the database |  | 6.5d | 2009-04-14 A | 2009-04-22 |  | 25% | 4.88d | 2009-03-04 | 2009-03-04 | 1d? | 55d | 1.5d | finish no earlier than 2009-04-22 | Nathan | 52h | 13h | 5,980 |  | 1,495 | SYS06-03 | 1 day | 15 |  |
| 14 | 1.1.1.11 | Dev: Generic GIS visualisation and output requirements |  | 80h | 2009-04-13 A | 2009-04-24 | 19 | 50% | 40h | 2009-03-02 | 2009-03-09 | 47.06h | 0d |  | finish no earlier than 2009-03-27 | Naifeh | 80h | 40h |  | 4,600 |  | MDSS143 |  | 16 |  |
| 15 | 1.1.2 | **Prototype Use cases** |  | 45.5d? | 2009-02-09 A | 2009-04-13 A |  | 100% |  | 2009-02-09 | 2009-03-12 | 23.23d? |  |  |  |  | 563.2h | 563.2h | 29,808 | 42,780 | 29,808 |  |  | 17 |  |
| 16 | 1.1.2.1 | **Search for a geo entity** |  | 35.35d? | 2009-02-20 A | 2009-04-10 A |  | 100% |  | 2009-02-20 | 2009-03-12 | 14.12d? |  |  |  |  | 168h | 168h |  | 11,040 |  | MDSS101 |  | 18 |  |
| 17 | 1.1.2.1.1 | Dev: Search for a geo entity - ontology tree |  | 9d | 2009-02-20 A | 2009-03-09 A |  | 100% |  | 2009-02-20 | 2009-02-26 | 4.71d? |  |  | finish no earlier than 2009-03-09 | Naifeh | 72h | 72h |  | 3,680 |  | MDSS111 | 4 days | 19 |  |
| 18 | 1.1.2.1.2 | Dev: Search for a geo entity |  | 2d? | 2009-03-17 A | 2009-03-18 A | 6, 17 | 100% |  | 2009-02-26 | 2009-03-03 | 2.35d? |  |  | finish no earlier than 2009-03-18 | Naifeh | 16h | 16h |  | 1,840 |  | MDSS101 |  | 20 |  |
| 19 | 1.1.2.1.3 | Polish MDSS111 and MDSS101 |  | 80h | 2009-03-23 A | 2009-04-10 A |  | 100% |  |  |  |  |  |  | finish no earlier than 2009-04-10 | Naifeh | 80h | 80h |  |  |  | MDSS101 |  | 376 |  |
| 20 | 1.1.2.2 | Investigate widget libraries |  | 16h | 2009-02-09 A | 2009-02-10 A |  | 100% |  | 2009-02-09 | 2009-02-10 | 16h |  |  | start no earlier than 2009-02-07 | Darrell | 16h | 16h | 1,840 | 1,840 | 1,840 |  |  | 24 |  |
| 21 | 1.1.2.3 | Dev: login to MDSS |  | 4h | 2009-02-11 A | 2009-02-11 A | 20 | 100% |  | 2009-02-11 | 2009-02-11 | 4h |  |  |  | Darrell | 4h | 4h | 460 | 460 | 460 | MDSS107 |  | 25 |  |
| 22 | 1.1.2.4 | Dev: BE - Submit a mosquito collection |  | 224h | 2009-02-09 A | 2009-03-18 A |  | 100% |  | 2009-02-09 | 2009-02-11 | 20h |  |  | start no earlier than 2009-02-07 | Justin [7.1%] | 16h | 16h | 1,840 | 1,840 | 1,840 | MDSS024 |  | 26 |  |
| 23 | 1.1.2.5 | Dev: GUI - Submit a mosquito collection |  | 20h | 2009-02-18 A | 2009-02-20 A | 21, 22 | 100% |  | 2009-02-11 | 2009-02-13 | 20h |  |  | start no earlier than 2009-02-18 | Darrell [80%] | 16h | 16h | 1,840 | 1,840 | 1,840 | MDSS024 |  | 27 |  |
| 24 | 1.1.2.6 | Dev: GUI - Adult discriminating dose assay |  | 20h | 2009-02-24 A | 2009-02-26 A | 35, 23 | 100% |  | 2009-02-25 | 2009-02-27 | 20h |  |  |  | Darrell [80%] | 16h | 16h | 1,840 | 1,840 | 1,840 | MDSS004 |  | 35 |  |
| 25 | 1.1.2.7 | Dev: BE - Submit collection points |  | 1.25d? | 2009-02-11 A | 2009-02-12 A | 22 | 100% |  | 2009-02-11 | 2009-02-12 | 1.25d? |  |  |  | Justin [80%] | 8h | 8h | 920 | 920 | 920 | MDSS016 |  | 28 |  |
| 26 | 1.1.2.8 | Dev: BE - Resistance Mechanisms |  | 5.75d | 2009-02-23 A | 2009-03-02 A | 25 | 100% |  | 2009-02-12 | 2009-02-17 | 2.5d? |  |  | finish no earlier than 2009-03-02 | Justin [80%] | 36.8h | 36.8h | 4,232 | 1,840 | 4,232 | MDSS012 |  | 30 |  |
| 27 | 1.1.2.9 | Dev: GUI - Resistance Mechanisms |  | 48h | 2009-03-03 A | 2009-03-10 A | 26, 24 | 100% |  | 2009-02-17 | 2009-02-24 | 40h |  |  | finish no earlier than 2009-03-06 | Darrell [200%] | 32h | 32h | 3,680 | 3,680 | 3,680 | MDSS012 |  | 31 |  |
| 28 | 1.1.2.10 | Dev: GUI - Submit collection points |  | 10h | 2009-03-23 A | 2009-03-24 A | 33 | 100% |  | 2009-02-16 | 2009-02-17 | 10h |  |  | start no earlier than 2009-02-24 | Darrell [80%] | 8h | 8h | 920 | 920 | 920 | MDSS016 |  | 29 |  |
| 29 | 1.1.2.11 | Dev: GUI - Efficacy assay |  | 5h | 2009-03-13 A | 2009-03-16 A | 36 | 100% |  | 2009-03-18 | 2009-03-23 | 20h |  |  | finish no earlier than 2009-03-13 | Darrell [80%] | 4h | 4h | 460 | 1,840 | 460 | MDSS025 |  | 51 |  |
| 30 | 1.1.2.12 | Dev: BE - Resistance cut-off values |  | 1.25d? | 2009-02-20 A | 2009-02-23 A |  | 100% |  | 2009-02-17 | 2009-02-18 | 1.25d? |  |  |  | Justin [80%] | 8h | 8h | 920 | 920 | 920 | MDSS009 |  | 32 |  |
| 31 | 1.1.2.13 | Dev: GUI - Resistance cut-off values |  | 8h | 2009-02-27 A | 2009-02-27 A | 30 | 100% |  | 2009-02-24 | 2009-02-25 | 10h |  |  | start no earlier than 2009-02-27 | Darrell | 8h | 8h | 920 | 920 | 920 | MDSS009 |  | 33 |  |
| 32 | 1.1.2.14 | Dev: BE - Adult knock down assay |  | 1.25d? | 2009-03-16 A | 2009-03-17 A | 29, 44 | 100% |  | 2009-03-05 | 2009-03-09 | 1.5d? |  |  |  | Justin [80%] | 8h | 8h | 920 | 1,104 | 920 | MDSS006 |  | 46 |  |
| 33 | 1.1.2.15 | Dev: GUI - Adult knock down assay |  | 10h | 2009-03-20 A | 2009-03-23 A | 32, 34 | 100% |  | 2009-03-13 | 2009-03-16 | 15h |  |  |  | Darrell [80%] | 8h | 8h | 920 | 1,380 | 920 | MDSS006 |  | 47 |  |
| 34 | 1.1.2.16 | Dev: GUI - Larvae discriminating dose assay |  | 10h | 2009-03-19 A | 2009-03-20 A |  | 100% |  | 2009-03-16 | 2009-03-18 | 15h |  |  | start no earlier than 2009-03-19 | Darrell [80%] | 8h | 8h | 920 | 1,380 | 920 | MDSS008 |  | 49 | 10 |
| 35 | 1.1.2.17 | Dev: BE - Adult discriminating dose assay |  | 1.25d? | 2009-02-23 A | 2009-02-24 A | 30 | 100% |  | 2009-02-18 | 2009-02-20 | 2.5d? |  |  |  | Justin [80%] | 8h | 8h | 920 | 1,840 | 920 | MDSS004 |  | 34 |  |
| 36 | 1.1.2.18 | Dev: BE - Efficacy assay |  | 2.5d? | 2009-03-11 A | 2009-03-13 A |  | 100% |  | 2009-03-10 | 2009-03-13 | 2.5d? |  |  | start no earlier than 2009-03-11 | Justin [80%] | 16h | 16h | 1,840 | 1,840 | 1,840 | MDSS025 |  | 50 |  |
| 37 | 1.1.2.19 | Dev: Configure import interfaces |  | 32h | 2009-02-24 A | 2009-02-27 A |  | 100% |  | 2009-02-23 | 2009-02-24 | 10h |  |  | start no earlier than 2009-02-24 | Eric [50%] | 16h | 16h |  | 920 |  | MDSS100 |  | 36 |  |
| 38 | 1.1.2.20 | Dev: BE - Entomology dynamic query |  | 5d | 2009-03-23 A | 2009-03-27 A | 35 | 100% |  | 2009-02-24 | 2009-02-26 | 2.5d? |  |  | finish no earlier than 2009-03-27 | Naifeh | 40h | 40h |  | 1,840 |  | MDSS145 |  | 38 |  |
| 39 | 1.1.2.21 | Dev: Enquiry integration with selected reporting tool |  | 4d? | 2009-03-06 A | 2009-03-11 A | 26 | 100% |  | 2009-02-26 | 2009-03-04 | 4d? |  |  | finish no earlier than 2009-03-11 | Justin | 32h | 32h | 3,680 | 3,680 | 3,680 | SYS09 |  | 40 |  |
| 40 | 1.1.2.22 | Dev: Create formatted dynamic reports |  | 8h | 2009-03-12 A | 2009-03-12 A | 39 | 100% |  |  |  |  |  |  | start no earlier than 2009-03-12 | Justin [80%] | 6.4h | 6.4h | 736 |  | 736 | MDSS062 |  | 360 |  |
| 41 | 1.1.2.23 | Dev: MO Importer |  | 40h | 2009-03-02 A | 2009-03-06 A |  | 100% |  |  |  |  |  |  | start no earlier than 2009-03-02 | Eric | 40h | 40h |  |  |  |  |  | 359 |  |
| 42 | 1.1.2.24 | Dev: change visibility of fields on GUI |  | 40h | 2009-04-06 A | 2009-04-13 A | 166 | 100% |  | 2009-03-05 | 2009-03-11 | 32h |  |  | start no earlier than 2009-04-06 | Eric | 40h | 40h |  | 3,680 |  | MDSS117 |  | 41 |  |
| 43 | 1.2 | Required delivery of prototype | milestone | 8h | 2009-03-09 A | 2009-03-09 A |  | 100% |  | 2009-03-02 | 2009-03-02 | 8h |  |  | start no earlier than 2009-03-09 |  |  |  |  |  |  |  |  | 43 |  |
| 44 | 1.3 | Dev: BE - Larvae discriminating dose assay |  | 1.25d? | 2009-03-13 A | 2009-03-16 A | 36 | 100% |  | 2009-03-09 | 2009-03-10 | 1.5d? |  |  | finish no earlier than 2009-03-13 | Justin [80%] | 8h | 8h | 920 | 1,104 | 920 | MDSS008 |  | 48 | 10 |
| 45 | 1.4 | Dev: Entomology Resistance (bioassay) dynamic query |  | 24h | 2009-05-19 | 2009-05-21 | 172 |  |  | 2009-03-03 | 2009-03-05 | 20h | 0d |  |  | Naifeh | 24h |  |  | 1,840 |  | MDSS145 |  | 39 |  |
| 46 | 1.5 | Dev: Entomology (biochem/Mol assay) dynamic query |  | 24h | 2009-05-22 | 2009-05-26 | 45 |  |  |  |  |  | 0d |  |  | Naifeh | 24h |  |  |  |  | MDSS145 |  | 377 |  |
| 47 | 1.6 | Dev: Entomology Efficacy dynamic query |  | 24h | 2009-05-27 | 2009-05-29 | 46 |  |  |  |  |  | 0d |  |  | Naifeh | 24h |  |  |  |  | MDSS145 |  | 378 |  |
| 48 | 1.7 | CR: BE - Submit Collection Points |  | 4h | 2009-03-18 A | 2009-03-18 A | 32 | 100% |  |  |  |  |  |  |  | Justin | 4h | 4h | 460 |  | 460 | MDSS016 |  | 361 |  |
| 49 | 1.8 | CR: BE - Mechanisms |  | 4h | 2009-03-18 A | 2009-03-18 A | 48 | 100% |  |  |  |  |  |  |  | Justin | 4h | 4h | 460 |  | 460 | MDSS012 |  | 362 |  |
| 50 | 1.9 | CR: GUI - Mechanisms |  | 4h | 2009-03-24 A | 2009-03-25 A | 49, 28 | 100% |  |  |  |  |  |  |  | Darrell | 4h | 4h | 460 |  | 460 | MDSS012 |  | 363 |  |
| 51 | 1.10 | CR: BE - Resistance cut-off values |  | 4h | 2009-03-19 A | 2009-03-19 A | 49 | 100% |  |  |  |  |  |  |  | Justin | 4h | 4h | 460 |  | 460 | MDSS009 |  | 364 |  |
| 52 | 1.11 | CR: GUI - Resistance cut-off values |  | 4h | 2009-03-25 A | 2009-03-25 A | 51, 50 | 100% |  |  |  |  |  |  |  | Darrell | 4h | 4h | 460 |  | 460 | MDSS009 |  | 365 |  |

| ID | WBS | Task | Type | Duration | Start | Finish | Predecessors | Complete | Remaining | Baseline start | Baseline finish | Baseline duration | Total slack | Constraint | Resources | Work | Actual work | Cost | Actual cost | Text4 |
| --- | --- | --- | --- | --- | --- | --- | --- | --- | --- | --- | --- | --- | --- | --- | --- | --- | --- | --- | --- | --- |
| 53 | 1.12 | **Aquire Geo Data** |  | 22d? | 2009-03-24 A | 2009-04-22 |  | 87% | 2.78d? | 2009-02-10 | 2009-02-24 | 11d? | 55d |  |  |  |  |  |  | 52 |
| 54 | 1 | **Mozambique** |  | 0d | 2009-03-24 A | 2009-03-24 |  |  | 0d | 2009-02-10 | 2009-02-24 | 11d? | 77d |  |  |  |  |  |  | 53 |
| 55 | 1.1 | Priority 1: Province Boundaries | milestone | 0h | 2009-03-24 A | 2009-03-24 A |  | 100% |  | 2009-02-10 | 2009-02-23 | 10d |  | start no earlier than 2009-03-24 |  |  |  |  |  | 54 |
| 56 | 1.2 | Priority 1: District Boundaries | milestone | 0h | 2009-03-24 A | 2009-03-24 A |  | 100% |  | 2009-02-10 | 2009-02-13 | 4d? |  | start no earlier than 2009-03-24 |  |  |  |  |  | 57 |
| 57 | 1.3 | Priority 1: Administrative Post Boundaries | milestone | 0h | 2009-03-24 A | 2009-03-24 A |  | 100% |  | 2009-02-10 | 2009-02-13 | 4d? |  | start no earlier than 2009-03-24 |  |  |  |  |  | 60 |
| 58 | 1.4 | Priority 1: Locality Boundaries | milestone | 0h | 2009-03-24 A | 2009-03-24 A |  | 100% |  | 2009-02-10 | 2009-02-13 | 4d? |  | start no earlier than 2009-03-24 |  |  |  |  |  | 63 |
| 59 | 1.5 | Priority 1: Village Points | milestone | 0h | 2009-03-24 A | 2009-03-24 A |  | 100% |  | 2009-02-10 | 2009-02-23 | 10d? |  | start no earlier than 2009-03-24 |  |  |  |  |  | 66 |
| 60 | 1.6 | Priority 1: Health Facility Points | milestone | 0h | 2009-03-24 A | 2009-03-24 A |  | 100% |  | 2009-02-10 | 2009-02-24 | 11d? |  | start no earlier than 2009-03-24 |  |  |  |  |  | 69 |
| 61 | 1.7 | Priority 1: Sentinel Site Points | milestone | 0h | 2009-03-24 A | 2009-03-24 A |  | 100% |  | 2009-02-10 | 2009-02-16 | 5d? |  | start no earlier than 2009-03-24 |  |  |  |  |  | 72 |
| 62 | 1.8 | Priority 1: Window Trap Points | milestone | 0h | 2009-03-24 | 2009-03-24 |  |  |  | 2009-02-10 | 2009-02-16 | 5d? | 76d | start no earlier than 2009-03-24 |  |  |  |  |  | 75 |
| 63 | 2 | **Malawi** |  | 1d | 2009-03-31 A | 2009-03-31 |  | 86% | 0.14d | 2009-02-10 | 2009-02-23 | 10d? | 71d |  |  |  |  |  |  | 78 |
| 64 | 2.1 | Priority 1: Province / Region Boundaries |  | 1d | 2009-03-31 A | 2009-03-31 A |  | 100% |  | 2009-02-10 | 2009-02-23 | 10d? |  | start no earlier than 2009-03-31 |  |  |  |  |  | 79 |
| 65 | 2.2 | Priority 1: District Boundaries | milestone | 1d | 2009-03-31 A | 2009-03-31 A |  | 100% |  | 2009-02-10 | 2009-02-23 | 10d? |  | start no earlier than 2009-03-31 |  |  |  |  |  | 82 |
| 66 | 2.3 | Priority 1: Traditional Authority Boundaries | milestone | 1d | 2009-03-31 A | 2009-03-31 A |  | 100% |  | 2009-02-10 | 2009-02-23 | 10d? |  | start no earlier than 2009-03-31 |  |  |  |  |  | 85 |
| 67 | 2.4 | Priority 1: Village Points | milestone | 1d | 2009-03-31 A | 2009-03-31 A |  | 100% |  | 2009-02-10 | 2009-02-23 | 10d? |  | start no earlier than 2009-03-31 |  |  |  |  |  | 88 |
| 68 | 2.5 | Priority 1: Health Facility Points | milestone | 1d | 2009-03-31 A | 2009-03-31 A |  | 100% |  | 2009-02-10 | 2009-02-23 | 10d? |  | start no earlier than 2009-03-31 |  |  |  |  |  | 91 |
| 69 | 2.6 | Priority 1: Sentinel Site Points | milestone | 1d | 2009-03-31 A | 2009-03-31 A |  | 100% |  | 2009-02-10 | 2009-02-19 | 8d? |  | start no earlier than 2009-03-31 |  |  |  |  |  | 94 |
| 70 | 2.7 | Priority 1: Window Trap Points | milestone | 1d | 2009-03-31 | 2009-03-31 |  |  |  | 2009-02-10 | 2009-02-17 | 6d? | 70d | start no earlier than 2009-03-31 |  |  |  |  |  | 97 |
| 71 | 3 | **Zambia** |  | 10d? | 2009-04-09 A | 2009-04-22 |  | 88% | 1.25d? | 2009-02-10 | 2009-02-23 | 10d? | 55d |  |  |  |  |  |  | 100 |
| 72 | 3.1 | Priority 1: Province Boundaries | milestone | 10d? | 2009-04-09 A | 2009-04-22 A |  | 100% |  | 2009-02-10 | 2009-02-23 | 10d? |  | start no earlier than 2009-04-09 |  |  |  |  |  | 101 |
| 73 | 3.2 | Priority 1: District Boundaries | milestone | 10d? | 2009-04-09 A | 2009-04-22 A |  | 100% |  | 2009-02-10 | 2009-02-23 | 10d? |  | start no earlier than 2009-04-09 |  |  |  |  |  | 104 |
| 74 | 3.3 | Priority 1: Constituency Boundaries | milestone | 10d? | 2009-04-09 A | 2009-04-22 A |  | 100% |  | 2009-02-10 | 2009-02-23 | 10d? |  | start no earlier than 2009-04-09 |  |  |  |  |  | 107 |
| 75 | 3.4 | Priority 1: Ward Boundaries | milestone | 10d? | 2009-04-09 A | 2009-04-22 A |  | 100% |  | 2009-02-10 | 2009-02-23 | 10d? |  | start no earlier than 2009-04-09 |  |  |  |  |  | 110 |
| 76 | 3.5 | Priority 1: Village Points | milestone | 10d? | 2009-04-09 A | 2009-04-22 A |  | 100% |  | 2009-02-10 | 2009-02-23 | 10d? |  | start no earlier than 2009-04-09 |  |  |  |  |  | 113 |
| 77 | 3.6 | Priority 1: Health Facility Points | milestone | 10d? | 2009-04-09 A | 2009-04-22 A |  | 100% |  | 2009-02-10 | 2009-02-20 | 9d? |  | start no earlier than 2009-04-09 |  |  |  |  |  | 116 |
| 78 | 3.7 | Priority 1: Sentinel Site Points | milestone | 10d? | 2009-04-09 A | 2009-04-22 A |  | 100% |  | 2009-02-10 | 2009-02-20 | 9d? |  | start no earlier than 2009-04-09 |  |  |  |  |  | 119 |
| 79 | 3.8 | Priority 1: Window Trap Points | milestone | 10d? | 2009-04-09 | 2009-04-22 |  |  |  | 2009-02-10 | 2009-02-20 | 9d? | 54d | start no earlier than 2009-04-09 |  |  |  |  |  | 122 |
| 80 | 1.13 | Deliver Population data | milestone | 0h | 2009-04-09 A | 2009-04-09 A |  | 100% |  | 2009-02-24 | 2009-02-24 | 0h |  | start no earlier than 2009-04-09 | MRC |  |  |  |  | 125 |
| 81 | 1.14 | Import Geo data into MDSS schema |  | 28.24h | 2009-04-09 A | 2009-04-14 A | 80 | 100% |  | 2009-02-25 | 2009-02-25 | 8h |  |  | Nathan [85%] | 24h | 24h | 2,760 | 2,760 | 126 |
| 82 | 1.15 | Deliver entomology data to be imported |  | 84h | 2009-02-18 A | 2009-03-04 A |  | 100% |  | 2009-02-20 | 2009-02-20 | 0h |  | start no earlier than 2009-02-18 | Mike | 64h | 64h |  |  | 127 |

| ID | WBS | Task | Type | Duration | Start | Finish | Predecessors | Complete | Remaining | Baseline start | Baseline finish | Baseline duration | Total slack | Free slack | Constraint | Deadline | Resources | Work | Actual work | Text4 | Text1 |
| --- | --- | --- | --- | --- | --- | --- | --- | --- | --- | --- | --- | --- | --- | --- | --- | --- | --- | --- | --- | --- | --- |
| 83 | 1.16 | **Prototype Test Cases** |  | 2.86d? | 2009-02-23 A | 2009-02-25 A |  | 100% |  | 2009-02-11 | 2009-02-13 | 2.86d? |  |  |  |  |  | 16h | 16h | 128 |  |
| 84 | 1.16.1 | TC: Geo Tree |  | 1.43d? | 2009-02-23 A | 2009-02-24 A |  | 100% |  | 2009-02-11 | 2009-02-12 | 1.43d? |  |  | start no earlier than 2009-02-21 |  | Marlize [70%] | 8h | 8h | 129 | MDSS111 |
| 85 | 1.16.2 | TC: Searching for a geo entity |  | 11.43h | 2009-02-24 A | 2009-02-25 A | 84 | 100% |  | 2009-02-12 | 2009-02-13 | 11.43h |  |  |  |  | Marlize [70%] | 8h | 8h | 130 | MDSS101 |
| 86 | 1.17 | Create test cases for entomology prototype |  | 88h | 2009-02-16 A | 2009-03-02 A |  | 100% |  | 2009-02-11 | 2009-02-20 | 64h |  |  | finish no earlier than 2009-03-02 |  | Mike [50%] | 32h | 32h | 131 |  |
| 87 | 1.18 | Test defect logging procedures |  | 0.71d? | 2009-03-04 A | 2009-03-04 A | 156 | 100% |  | 2009-02-24 | 2009-02-25 | 0.71d? |  |  | start no earlier than 2009-03-04 |  | Marlize [70%] | 4h | 4h | 132 |  |
| 88 | 1.19 | Prepare entomology test data |  | 5.72h | 2009-03-06 A | 2009-03-06 A | 82, 89 | 100% |  | 2009-02-27 | 2009-02-27 | 5.71h |  |  |  |  | Marlize [69.9%] | 4h | 4h | 133 |  |
| 89 | 1.20 | Learn BIRT report writer |  | 11.43h | 2009-03-19 A | 2009-03-20 A | 87 | 100% |  | 2009-02-25 | 2009-02-27 | 11.43h |  |  | start no earlier than 2009-03-19 |  | Marlize [70%] | 8h | 8h | 134 |  |
| 90 | 1.21 | **Test Prototype Submit Change Requests** |  | 40.89d? | 2009-03-16 A | 2009-05-11 |  | 61% | 15.91d? | 2009-03-02 | 2009-03-20 | 13.57d? | 42.11d |  |  |  |  | 103.06h | 65.06h | 135 |  |
| 91 | 1.21.1 | **Test: Geo entity search and maintanance** |  | 16.72d? | 2009-03-17 A | 2009-04-09 A |  | 100% |  | 2009-03-02 | 2009-03-12 | 7.15d? |  |  |  |  |  | 44.02h | 44.02h | 136 |  |
| 92 | 1.21.1.1 | Test: login to MDSS | milestone | 0h | 2009-03-17 A | 2009-03-17 A | 88 | 100% |  | 2009-03-02 | 2009-03-02 | 0h |  |  | start no earlier than 2009-03-09 | 2009-03-08 | Marlize [70%] |  |  | 137 | MDSS107 |
| 93 | 1.21.1.2 | Test: Search for a geo entity - tree |  | 0.36d? | 2009-03-30 A | 2009-03-30 A | 92, 160 | 100% |  | 2009-03-03 | 2009-03-03 | 0.36d? |  |  | start no earlier than 2009-03-03 |  | Marlize [70%] | 2h | 2h | 138 | MDSS111 |
| 94 | 1.21.1.3 | Submit defects: Search for a geo entity - tree |  | 0.71d? | 2009-03-30 A | 2009-03-31 A | 93 | 100% |  | 2009-03-03 | 2009-03-04 | 0.71d? |  |  |  |  | Marlize [70%] | 4h | 4h | 139 | MDSS111 |
| 95 | 1.21.1.4 | Test: create a geo entity |  | 2.86h | 2009-03-31 A | 2009-03-31 A | 94 | 100% |  | 2009-03-04 | 2009-03-04 | 2.86h |  |  |  |  | Marlize [70%] | 2h | 2h | 140 | MDSS101 |
| 96 | 1.21.1.5 | Submit defects: create a geo entity |  | 5.71h | 2009-03-31 A | 2009-04-01 A | 95 | 100% |  | 2009-03-04 | 2009-03-05 | 5.71h |  |  |  |  | Marlize [70%] | 4h | 4h | 141 | MDSS101 |
| 97 | 1.21.1.6 | Test: Search for a geo entity - filtered |  | 0.36d? | 2009-04-01 A | 2009-04-01 A | 96 | 100% |  | 2009-03-05 | 2009-03-05 | 0.36d? |  |  |  |  | Marlize [70%] | 2h | 2h | 142 | MDSS101 |
| 98 | 1.21.1.7 | Submit defects: Search for a geo entity - filtered |  | 0.36d | 2009-04-01 A | 2009-04-02 A | 97 | 100% |  | 2009-03-05 | 2009-03-05 | 0.36d |  |  |  |  | Marlize [70%] | 2.02h | 2.02h | 143 | MDSS101 |
| 99 | 1.21.1.8 | Test: Search for a geo entity - Hierarchy table |  | 1.43d? | 2009-04-02 A | 2009-04-03 A | 98 | 100% |  | 2009-03-05 | 2009-03-09 | 1.43d? |  |  |  |  | Marlize [70%] | 8h | 8h | 144 | MDSS101 |
| 100 | 1.21.1.9 | TC: IRS - dynamic query |  | 5.72h | 2009-04-03 A | 2009-04-06 A | 99 | 100% |  | 2009-03-30 | 2009-03-31 | 5.71h |  |  |  |  | Marlize [69.9%] | 4h | 4h | 328 | MDSS132 |
| 101 | 1.21.1.10 | Submit defects: Search for a geo entity - Hierarchy table |  | 0.71d? | 2009-04-06 A | 2009-04-07 A | 100 | 100% |  | 2009-03-09 | 2009-03-10 | 0.71d? |  |  |  |  | Marlize [70%] | 4h | 4h | 145 | MDSS101 |
| 102 | 1.21.1.11 | Test: Search for a geo entity - combo boxes |  | 0.36d? | 2009-04-07 A | 2009-04-07 A | 101 | 100% |  | 2009-03-10 | 2009-03-10 | 0.36d? |  |  |  |  | Marlize [70%] | 2h | 2h | 146 | MDSS101 |
| 103 | 1.21.1.12 | Submit defects: Search for a geo entity - combo boxes |  | 0.36d? | 2009-04-07 A | 2009-04-07 A | 102 | 100% |  | 2009-03-10 | 2009-03-10 | 0.36d? |  |  |  |  | Marlize [70%] | 2h | 2h | 147 | MDSS101 |
| 104 | 1.21.1.13 | Test: Call 101 from 024, 016, 025 |  | 0.36d? | 2009-04-07 A | 2009-04-08 A | 103 | 100% |  | 2009-03-10 | 2009-03-11 | 0.36d? |  |  |  |  | Marlize [70%] | 2h | 2h | 148 | MDSS101 |
| 105 | 1.21.1.14 | Submit defects: Call 101 from 024, 016, 025 |  | 0.36d? | 2009-04-08 A | 2009-04-08 A | 104 | 100% |  | 2009-03-11 | 2009-03-11 | 0.36d? |  |  |  |  | Marlize [70%] | 2h | 2h | 149 | MDSS101 |
| 106 | 1.21.1.15 | Write change request MDSS101, MDSS111 |  | 0.71d? | 2009-04-08 A | 2009-04-09 A | 105 | 100% |  | 2009-03-11 | 2009-03-12 | 0.71d? |  |  |  |  | Marlize [70%] | 4h | 4h | 150 | MDSS101 |
| 107 | 1.21.2 | Test: changing visibility of fields in GUI |  | 1.43h | 2009-04-22 | 2009-04-22 | 106 |  |  | 2009-03-12 | 2009-03-12 | 1.43h | 48.57d | 0d | start no earlier than 2009-04-22 |  | Marlize [70%] | 1h |  | 151 | MDSS117 |
| 108 | 1.21.3 | Submit defects: changing visibility of fields in GUI |  | 2.86h | 2009-04-22 | 2009-04-22 | 107 |  |  | 2009-03-12 | 2009-03-12 | 2.86h | 48.57d | 7.46d |  |  | Marlize [70%] | 2h |  | 152 | MDSS117 |
| 109 | 1.21.4 | Test: Resistance cut-off values |  | 1h | 2009-03-16 A | 2009-03-16 A |  | 100% |  | 2009-03-13 | 2009-03-13 | 1h |  |  | start no earlier than 2009-03-14 |  | Mike | 1h | 1h | 179 | MDSS009 |
| 110 | 1.21.5 | Submit defects: Resistance cut-off values |  | 1h | 2009-03-16 A | 2009-03-16 A | 109 | 100% |  | 2009-03-16 | 2009-03-16 | 1h |  |  |  |  | Mike | 1h | 1h | 180 | MDSS009 |
| 111 | 1.21.6 | Test:Species identification |  | 1h | 2009-03-16 A | 2009-03-16 A | 110 | 100% |  | 2009-03-10 | 2009-03-10 | 1h |  |  |  |  | Mike | 1h | 1h | 162 | MDSS012 |
| 112 | 1.21.7 | Submit defects: Species identification |  | 1h | 2009-03-16 A | 2009-03-16 A | 111 | 100% |  | 2009-03-11 | 2009-03-11 | 1h |  |  |  |  | Mike | 1h | 1h | 163 | MDSS012 |
| 113 | 1.21.8 | Write change request: Mechanisms |  | 1h | 2009-03-16 A | 2009-03-16 A | 112 | 100% |  | 2009-03-12 | 2009-03-12 | 4h |  |  |  |  | Mike | 1h | 1h | 172 | MDSS012 |
| 114 | 1.21.9 | Test: Submit a mosquito collection |  | 0.13d? | 2009-03-16 A | 2009-03-16 A | 113 | 100% |  | 2009-03-09 | 2009-03-09 | 0.12d? |  |  |  |  | Mike | 1.04h | 1.04h | 153 | MDSS024 |
| 115 | 1.21.10 | Submit defects: Submit a mosquito collection |  | 1h | 2009-03-16 A | 2009-03-16 A | 114 | 100% |  | 2009-03-09 | 2009-03-09 | 2h |  |  |  |  | Mike | 1h | 1h | 154 | MDSS024 |
| 116 | 1.21.11 | Write change request: Collections |  | 1h | 2009-03-23 A | 2009-03-23 A | 115 | 100% |  | 2009-03-10 | 2009-03-10 | 4h |  |  | finish no earlier than 2009-03-23 |  | Miguel | 1h | 1h | 159 | MDSS024 |
| 117 | 1.21.12 | Test: search/update/delete record |  | 1h | 2009-03-17 A | 2009-03-17 A | 116 | 100% |  | 2009-03-09 | 2009-03-09 | 1h |  |  |  |  | Mike | 1h | 1h | 155 | MDSS75 |
| 118 | 1.21.13 | Submit defects: search/update/delete |  | 1h | 2009-03-17 A | 2009-03-17 A | 117 | 100% |  | 2009-03-09 | 2009-03-09 | 2h |  |  |  |  | Mike | 1h | 1h | 156 |  |
| 119 | 1.21.14 | Test: Efficacy assay |  | 0.12d? | 2009-03-17 A | 2009-03-17 A | 118 | 100% |  | 2009-03-16 | 2009-03-16 | 0.12d? |  |  |  |  | Mike | 1h | 1h | 182 | MDSS025 |
| 120 | 1.21.15 | Submit defects: Efficacy assay |  | 1h | 2009-03-17 A | 2009-03-17 A | 119 | 100% |  | 2009-03-16 | 2009-03-16 | 1h |  |  |  |  | Mike | 1h | 1h | 183 | MDSS025 |
| 121 | 1.21.16 | Write change request: Efficacy assay |  | 1h | 2009-03-23 A | 2009-03-23 A | 120 | 100% |  | 2009-03-16 | 2009-03-17 | 2h |  |  | finish no earlier than 2009-03-23 |  | Miguel | 1h | 1h | 184 | MDSS025 |
| 122 | 1.21.17 | Test: Adult discriminating dose assay |  | 0.12d? | 2009-03-17 A | 2009-03-17 A | 121 | 100% |  | 2009-03-12 | 2009-03-13 | 0.25d? |  |  |  |  | Mike | 1h | 1h | 173 | MDSS004 |
| 123 | 1.21.18 | Submit defects: Adult discriminating dose assay |  | 1h | 2009-03-17 A | 2009-03-17 A | 122 | 100% |  | 2009-03-13 | 2009-03-13 | 2h |  |  |  |  | Mike | 1h | 1h | 174 | MDSS004 |
| 124 | 1.21.19 | Test: Adult knock down assay |  | 0.12d? | 2009-03-25 A | 2009-03-25 A | 123 | 100% |  | 2009-03-13 | 2009-03-13 | 0.12d? |  |  | start no earlier than 2009-03-25 |  | Mike | 1h | 1h | 177 | MDSS006 |
| 125 | 1.21.20 | Submit defects: Adult knock down assay |  | 1h | 2009-03-25 A | 2009-03-25 A | 124 | 100% |  | 2009-03-13 | 2009-03-13 | 1h |  |  |  |  | Mike | 1h | 1h | 178 | MDSS006 |
| 126 | 1.21.21 | Test: Larvae discriminating dose assay |  | 0.12d? | 2009-03-25 A | 2009-03-25 A | 125 | 100% |  | 2009-03-13 | 2009-03-13 | 0.12d? |  |  |  |  | Mike | 1h | 1h | 175 | MDSS008 |
| 127 | 1.21.22 | Submit defects: Larvae discriminating dose assay |  | 1h | 2009-03-25 A | 2009-03-25 A | 126 | 100% |  | 2009-03-13 | 2009-03-13 | 1h |  |  |  |  | Mike | 1h | 1h | 176 | MDSS008 |
| 128 | 1.21.23 | Test: Submit collection points |  | 1h | 2009-03-25 A | 2009-03-25 A | 127 | 100% |  | 2009-03-09 | 2009-03-09 | 1h |  |  |  |  | Mike | 1h | 1h | 157 | MDSS016 |
| 129 | 1.21.24 | Submit defects: Submit collection points |  | 1h | 2009-03-25 A | 2009-03-25 A | 128 | 100% |  | 2009-03-09 | 2009-03-09 | 1h |  |  |  |  | Mike | 1h | 1h | 158 | MDSS016 |
| 130 | 1.21.25 | Test: Import assay and collection data |  | 1h | 2009-04-27 | 2009-04-27 | 88, 129 |  |  | 2009-03-10 | 2009-03-10 | 1h | 51.75d | 0d | start no earlier than 2009-04-25 |  | Mike | 1h |  | 160 | MDSS102 |
| 131 | 1.21.26 | Submit defects: generic import functionality |  | 1h | 2009-04-27 | 2009-04-27 | 130 |  |  | 2009-03-10 | 2009-03-10 | 2h | 51.75d |  |  |  | Mike | 1h |  | 161 | MDSS102 |

| ID | WBS | Task | Duration | Start | Finish | Predecessors | Complete | Baseline start | Baseline finish | Baseline duration | Total slack | Free slack | Constraint | Resources | Work | Actual work | Text1 | Text4 |
| --- | --- | --- | --- | --- | --- | --- | --- | --- | --- | --- | --- | --- | --- | --- | --- | --- | --- | --- |
| 132 | 1.21.27 | **Test: IRS dynamic query and reports** | 5.89d | 2009-05-04 | 2009-05-11 | 108 |  | 2009-03-12 | 2009-03-20 | 5.89d | 42.11d |  |  |  | 33h |  | MDSS145 | 185 |
| 133 | 1.21.27.1 | Test: add Geo-entity fields | 1.43h | 2009-05-04 | 2009-05-04 |  |  | 2009-03-12 | 2009-03-12 | 1.43h | 41.11d | 0d | start no earlier than 2009-05-04 | Marlize [70%] | 1h |  | MDSS145 | 186 |
| 134 | 1.21.27.2 | Test: add other fields | 1.43h | 2009-05-04 | 2009-05-04 | 133 |  | 2009-03-12 | 2009-03-13 | 1.43h | 41.11d | 0d |  | Marlize [70%] | 1h |  | MDSS145 | 187 |
| 135 | 1.21.27.3 | Test: add functions | 1.43h | 2009-05-04 | 2009-05-04 | 134 |  | 2009-03-13 | 2009-03-13 | 1.43h | 41.11d | 0d |  | Marlize [70%] | 1h |  | MDSS145 | 188 |
| 136 | 1.21.27.4 | Test: date ranges on collection date or assay date | 1.43h | 2009-05-04 | 2009-05-04 | 135 |  | 2009-03-13 | 2009-03-13 | 1.43h | 41.11d | 0d |  | Marlize [70%] | 1h |  | MDSS145 | 189 |
| 137 | 1.21.27.5 | Submit defects: Build query | 2.86h | 2009-05-04 | 2009-05-05 | 136 |  | 2009-03-13 | 2009-03-13 | 2.86h | 41.11d | 0d |  | Marlize [70%] | 2h |  | MDSS145 | 190 |
| 138 | 1.21.27.6 | Test: save query | 1.43h | 2009-05-05 | 2009-05-05 | 137 |  | 2009-03-13 | 2009-03-13 | 1.43h | 41.11d | 0d |  | Marlize [70%] | 1h |  | MDSS056 | 191 |
| 139 | 1.21.27.7 | Test: run a saved query | 1.43h | 2009-05-05 | 2009-05-05 | 138 |  | 2009-03-13 | 2009-03-16 | 1.43h | 41.11d | 0d |  | Marlize [70%] | 1h |  | MDSS056 | 192 |
| 140 | 1.21.27.8 | Test: modify a saved query | 1.43h | 2009-05-05 | 2009-05-05 | 139 |  | 2009-03-16 | 2009-03-16 | 1.43h | 41.11d | 0d |  | Marlize [70%] | 1h |  | MDSS056 | 193 |
| 141 | 1.21.27.9 | Test: export query results | 1.43h | 2009-05-05 | 2009-05-05 | 140 |  | 2009-03-16 | 2009-03-16 | 1.43h | 41.11d | 0d |  | Marlize [70%] | 1h |  | MDSS071 | 194 |
| 142 | 1.21.27.10 | Test: dump functionality | 1.43h | 2009-05-05 | 2009-05-05 | 141 |  | 2009-03-16 | 2009-03-16 | 1.43h | 41.11d | 0d |  | Marlize [70%] | 1h |  |  | 195 |
| 143 | 1.21.27.11 | Submit defects: deploy query | 2.86h | 2009-05-05 | 2009-05-06 | 142 |  | 2009-03-16 | 2009-03-17 | 2.86h | 41.11d | 0d |  | Marlize [70%] | 2h |  |  | 196 |
| 144 | 1.21.27.12 | Test: create thematic map from query | 11.43h | 2009-05-06 | 2009-05-07 | 143 |  | 2009-03-17 | 2009-03-18 | 11.43h | 41.11d | 0d |  | Marlize [70%] | 8h |  |  | 197 |
| 145 | 1.21.27.13 | Test: find query results in BIRT | 1.43h | 2009-05-07 | 2009-05-07 | 144 |  | 2009-03-18 | 2009-03-18 | 1.43h | 41.11d | 0d |  | Marlize [70%] | 1h |  | MDSS062 | 198 |
| 146 | 1.21.27.14 | Test: create a report template (table) | 2.86h | 2009-05-07 | 2009-05-08 | 145 |  | 2009-03-18 | 2009-03-18 | 2.86h | 41.11d | 0d |  | Marlize [70%] | 2h |  | MDSS062 | 199 |
| 147 | 1.21.27.15 | Test: Link a report template to query | 1.43h | 2009-05-08 | 2009-05-08 | 146 |  | 2009-03-18 | 2009-03-19 | 1.43h | 41.11d | 0d |  | Marlize [70%] | 1h |  | MDSS056 | 200 |
| 148 | 1.21.27.16 | Test: view/print/save a report | 1.43h | 2009-05-08 | 2009-05-08 | 147 |  | 2009-03-19 | 2009-03-19 | 1.43h | 41.11d | 0d |  | Marlize [70%] | 1h |  | MDSS062 | 201 |
| 149 | 1.21.27.17 | Test: change linked report | 1.43h | 2009-05-08 | 2009-05-08 | 148 |  | 2009-03-19 | 2009-03-19 | 1.43h | 41.11d | 0d |  | Marlize [70%] | 1h |  | MDSS062 | 202 |
| 150 | 1.21.27.18 | Submit defects: deploy query | 2.86h | 2009-05-08 | 2009-05-11 | 149 |  | 2009-03-19 | 2009-03-19 | 2.86h | 41.11d | 0d |  | Marlize [70%] | 2h |  |  | 203 |
| 151 | 1.21.27.19 | Write change request: Dynamic query | 5.71h | 2009-05-11 | 2009-05-11 | 150 |  | 2009-03-19 | 2009-03-20 | 5.71h | 41.11d |  |  | Marlize [70%] | 4h |  |  | 204 |
| 152 | 1.22 | **Finalise Query Use Cases** | 28.43d | 2009-02-23 A | 2009-04-02 A |  | 100% | 2009-02-13 | 2009-04-08 | 38.11d |  |  |  |  | 77.6h | 77.6h |  | 205 |
| 153 | 1.22.1 | UC: Individual Cases - query | 11.43h | 2009-02-23 A | 2009-02-24 A |  | 100% | 2009-02-18 | 2009-02-20 | 11.43h |  |  | start no earlier than 2009-02-21 | Miguel [70%] | 8h | 8h | MDSS128 | 208 |
| 154 | 1.22.2 | UC: Aggregated Cases - query | 11.43h | 2009-02-25 A | 2009-02-27 A | 85 | 100% | 2009-02-13 | 2009-02-17 | 11.43h |  |  | start no earlier than 2009-02-24 | Miguel [70%] | 8h | 8h | MDSS129 | 206 |
| 155 | 1.22.3 | UC: Indicator survey - query | 11.43h | 2009-03-03 A | 2009-03-04 A | 154 | 100% | 2009-02-17 | 2009-02-18 | 11.43h |  |  | start no earlier than 2009-03-03 | Miguel [70%] | 8h | 8h | MDSS140 | 207 |
| 156 | 1.22.4 | UC: IRS - query | 17.14h | 2009-03-12 A | 2009-03-16 A | 153, 85 | 100% | 2009-02-20 | 2009-02-24 | 22.86h |  |  | finish no earlier than 2009-03-16 | Marlize [93.3%] | 16h | 16h | MDSS132 | 209 |
| 157 | 1.22.5 | UC: ITN Facility distribution - query | 11.43h | 2009-03-23 A | 2009-03-24 A |  | 100% | 2009-04-01 | 2009-04-02 | 11.43h |  |  | start no earlier than 2009-03-23 | Marlize [70%] | 8h | 8h | MDSS135 | 210 |
| 158 | 1.22.6 | UC: ITN Community distribution - query | 8h | 2009-03-24 A | 2009-03-25 A | 157 | 100% |  |  |  |  |  |  | Marlize [70%] | 5.6h | 5.6h | MDSS137 | 379 |
| 159 | 1.22.7 | UC: ITN household use - query | 11.43h | 2009-03-25 A | 2009-03-26 A | 158 | 100% | 2009-04-02 | 2009-04-06 | 11.43h |  |  |  | Marlize [70%] | 8h | 8h | MDSS138 | 211 |
| 160 | 1.22.8 | UC: IPT individual - query | 11.43h | 2009-03-26 A | 2009-03-30 A | 159 | 100% | 2009-04-06 | 2009-04-07 | 11.43h |  |  |  | Marlize [70%] | 8h | 8h | MDSS130 | 212 |
| 161 | 1.22.9 | UC: IPT aggregated - query | 11.43h | 2009-04-01 A | 2009-04-02 A | 160 | 100% | 2009-04-07 | 2009-04-08 | 11.43h |  |  | start no earlier than 2009-04-01 | Marlize [70%] | 8h | 8h | MDSS131 | 213 |

| ID | WBS | Task | Duration | Start | Finish | Predecessors | Complete | Remaining | Baseline start | Baseline finish | Baseline duration | Total slack | Free slack | Constraint | Resources | Work | Actual work | Cost | Baseline cost | Actual cost | Text4 | Text1 | Text2 |
| --- | --- | --- | --- | --- | --- | --- | --- | --- | --- | --- | --- | --- | --- | --- | --- | --- | --- | --- | --- | --- | --- | --- | --- |
| 162 | 1.23 | **Complete Development** | 88d? | 2009-03-09 A | 2009-07-08 |  | 18% | 71.96d? | 2009-03-02 | 2009-05-28 | 63.25d? | 0d |  |  |  | 1680h | 174.31h | 116,840 | 172,960 | 10,846.05 | 214 |  |  |
| 163 | 1.23.1 | **Generic Development** | 75d | 2009-03-09 A | 2009-06-19 |  | 75% | 18.46d | 2009-03-05 | 2009-04-14 | 28.76d? | 13d |  |  |  | 120h | 73.51h | 1,840 | 31,280 | 1,094.05 | 215 |  |  |
| 164 | 1.23.1.1 | Dev: Reconstruct saved query | 40h | 2009-04-16 A | 2009-04-22 | 13SS | 40% | 24h | 2009-03-12 | 2009-03-20 | 47.06h | 17.53d | 0d | finish no earlier than 2009-04-22 | Nathan [200%] | 16h | 9.51h | 1,840 | 4,600 | 1,094.05 | 216 | SYS06-4 |  |
| 165 | 1.23.1.2 | Dev: enter/maintain people in the system | 40h | 2009-04-16 A | 2009-04-22 | 42 | 40% | 24h | 2009-03-16 | 2009-03-19 | 18.82h | 55d | 0d | start no earlier than 2009-04-16 | Eric | 40h | 16h |  | 1,840 |  | 222 | MDSS114 |  |
| 166 | 1.23.1.3 | Dev: CRUD on localisable fields | 164h | 2009-03-09 A | 2009-04-06 A | 37 | 100% |  | 2009-03-05 | 2009-03-12 | 48h |  |  | finish no earlier than 2009-03-30 | Eric | 48h | 48h |  |  |  | 227 | SYS01-2 |  |
| 167 | 1.23.1.4 | Change geo root | 8h | 2009-06-19 | 2009-06-19 | 202, 216 |  |  | 2009-04-01 | 2009-04-03 | 20h | 13d |  | start no earlier than 2009-06-06 | Naifeh | 8h |  |  | 1,840 |  | 230 | MDSS122 |  |
| 168 | 1.23.1.5 | Configure universal icons | 8h | 2009-05-04 | 2009-05-04 | 198 |  |  |  |  |  | 0d |  | start no earlier than 2009-04-28 | Naifeh | 8h |  |  |  |  | 380 |  |  |
| 169 | 1.23.2 | **Indicator survey** | 27d | 2009-04-10 A | 2009-05-18 |  | 53% | 12.76d | 2009-03-19 | 2009-03-31 | 8d | 37d |  |  |  | 88h | 46.4h | 5,520 | 8,280 | 5,336 | 231 |  |  |
| 170 | 1.23.2.1 | Dev: BE - Indicator survey - CRUD | 16h | 2009-04-10 A | 2009-04-13 A | 174 | 100% |  |  |  |  |  |  | start no earlier than 2009-04-10 | Justin | 16h | 16h | 1,840 |  | 1,840 | 367 | MDSS026 |  |
| 171 | 1.23.2.2 | Dev: GUI - Indicator survey - CRUD | 32h | 2009-04-15 A | 2009-04-20 | 170, 175 | 95% | 1.6h | 2009-03-24 | 2009-03-31 | 40h | 57d |  | finish no earlier than 2009-03-30 | Darrell | 32h | 30.4h | 3,680 | 3,680 | 3,496 | 232 | MDSS026 |  |
| 172 | 1.23.2.3 | Dev - Indicator survey - dynamic query | 40h | 2009-05-12 | 2009-05-18 | 177 |  |  | 2009-03-19 | 2009-03-27 | 50h | 0d |  | start no earlier than 2009-04-04 | Naifeh | 40h |  |  | 4,600 |  | 233 | MDSS140 |  |
| 173 | 1.23.3 | **Case Surveilance** | 55d | 2009-03-30 A | 2009-06-12 |  | 16% | 46.32d | 2009-03-02 | 2009-05-07 | 48.25d | 18d |  |  |  | 344h | 32h | 26,680 | 51,520 | 3,680 | 234 |  |  |
| 174 | 1.23.3.1 | Dev: BE - aggregated cases - CRUD | 48h | 2009-03-30 A | 2009-04-06 A | 51 | 100% |  | 2009-03-02 | 2009-03-06 | 40h |  |  | start no earlier than 2009-03-30 | Justin [33.3%] | 16h | 16h | 1,840 | 4,600 | 1,840 | 235 | MDSS002 | 5 days |
| 175 | 1.23.3.2 | Dev: GUI - aggregated cases - CRUD | 16h | 2009-04-13 A | 2009-04-14 A | 174, 52 | 100% |  |  |  |  |  |  | start no earlier than 2009-04-13 | Darrell | 16h | 16h | 1,840 |  | 1,840 | 368 | MDSS002 |  |
| 176 | 1.23.3.3 | Dev: calculate CFR | 8h | 2009-05-19 | 2009-05-19 | 209 |  |  | 2009-03-19 | 2009-03-25 | 37.65h | 23d | 0d |  | Eric | 8h |  |  | 3,680 |  | 236 | MDSS087 | 4 days |
| 177 | 1.23.3.4 | Dev: aggregated cases - dynamic query | 40h | 2009-05-05 | 2009-05-11 | 154, 168 |  |  | 2009-03-09 | 2009-03-13 | 40h | 0d |  | start no earlier than 2009-04-07 | Naifeh | 40h |  |  | 4,600 |  | 237 | MDSS129 | 5 days |
| 178 | 1.23.3.5 | Dev: Input or modify population data | 37.65h | 2009-05-08 | 2009-05-15 | 208 |  |  | 2009-03-16 | 2009-03-19 | 32h | 18.53d | 0.53d | start no earlier than 2009-03-05 | Nathan [85%] | 32h |  | 3,680 | 3,680 |  | 238 | MDSS003 | 4 days |
| 179 | 1.23.3.6 | Dev: Calculate annual or seasonal population | 47.06h | 2009-05-18 | 2009-05-25 | 178 |  |  | 2009-04-29 | 2009-05-07 | 50h | 18d | 0d | start no earlier than 2009-05-16 | Nathan [85%] | 40h |  | 4,600 | 4,600 |  | 242 | MDSS073 | 5 days |
| 180 | 1.23.3.7 | Dev: Import population or annual growth rate data | 47.06h | 2009-05-25 | 2009-06-02 | 179 |  |  | 2009-03-20 | 2009-03-26 | 40h | 18d | 0d |  | Nathan [85%] | 40h |  | 4,600 | 4,600 |  | 239 | MDSS083 |  |
| 181 | 1.23.3.8 | Dev: input/modify outbreak thresholds | 37.65h | 2009-06-02 | 2009-06-09 | 180 |  |  | 2009-03-27 | 2009-04-01 | 32h | 18d | 0d |  | Nathan [85%] | 32h |  | 3,680 | 3,680 |  | 240 | MDSS105 | 5 days |
| 182 | 1.23.3.9 | Dev :import outbreak thresholds | 28.23h | 2009-06-09 | 2009-06-12 | 181 |  |  | 2009-04-02 | 2009-04-07 | 32h | 18d |  |  | Nathan [85%] | 24h |  | 2,760 | 3,680 |  | 241 | MDSS085 | 5 days |
| 183 | 1.23.3.10 | Dev: calculate incidence | 8h | 2009-05-20 | 2009-05-20 | 176 |  |  | 2009-03-25 | 2009-04-02 | 47.06h | 23d | 0d |  | Eric | 8h |  |  | 4,600 |  | 243 | MDSS086 | 5 days |
| 184 | 1.23.3.11 | Dev: BE - individual cases - CRUD | 16h | 2009-05-25 | 2009-05-26 | 200 |  |  |  |  |  | 1d | 0d | start no earlier than 2009-03-26 | Justin | 16h |  | 1,840 |  |  | 369 | MDSS001 |  |
| 185 | 1.23.3.12 | Dev: GUI - individual cases - CRUD | 16h | 2009-05-27 | 2009-05-28 | 184, 200 |  |  | 2009-04-08 | 2009-04-14 | 40h | 1d | 0.5d | start no earlier than 2009-04-02 | Darrell | 16h |  | 1,840 | 4,600 |  | 244 | MDSS001 | 5 days |
| 186 | 1.23.3.13 | Dev: Outbreak notification | 16h | 2009-05-21 | 2009-05-22 | 183 |  |  | 2009-04-02 | 2009-04-10 | 47.06h | 23d | 0d |  | Eric | 16h |  |  | 4,600 |  | 245 | MDSS124 | 5 days |
| 187 | 1.23.3.14 | Dev: individual case - dynamic query | 40h | 2009-06-01 | 2009-06-05 | 185, 153, 47 |  |  | 2009-04-15 | 2009-04-21 | 40h | 0d |  |  | Naifeh | 40h |  |  | 4,600 |  | 246 | MDSS128 | 5 days |

| ID | WBS | Task | Duration | Start | Finish | Predecessors | Complete | Remaining | Baseline start | Baseline finish | Baseline duration | Total slack | Free slack | Constraint | Resources | Work | Actual work | Cost | Baseline cost | Actual cost | Text4 | Text1 | Text2 |
| --- | --- | --- | --- | --- | --- | --- | --- | --- | --- | --- | --- | --- | --- | --- | --- | --- | --- | --- | --- | --- | --- | --- | --- |
| 188 | 1.23.4 | **Intervention monitoring** | 62d? | 2009-04-14 A | 2009-07-08 |  | 2% | 60.64d? | 2009-03-27 | 2009-05-28 | 43.75d | 0d |  |  |  | 1096h | 22.4h | 79,120 | 75,440 | 736 | 247 |  |  |
| 189 | 1.23.4.1 | **IRS** | 14d | 2009-04-14 A | 2009-05-01 |  | 10% | 12.65d | 2009-03-27 | 2009-05-21 | 38.75d | 48d |  |  |  | 232h | 22.4h | 14,720 | 28,520 | 736 | 248 |  |  |
| 190 | 1.23.4.1.1 | Dev: enter/maintain spray team member | 32h | 2009-04-16 A | 2009-04-21 | 165SS | 50% | 16h | 2009-04-22 | 2009-04-27 | 32h | 23d | 0d | start no earlier than 2009-03-20 | Eric | 32h | 16h |  | 3,680 |  | 249 | MDSS113 |  |
| 191 | 1.23.4.1.2 | Dev: enter/maintain IRS teams | 32h | 2009-04-22 | 2009-04-27 | 190 |  |  | 2009-04-28 | 2009-05-01 | 32h | 23d | 0d |  | Eric | 32h |  |  | 3,680 |  | 250 | MDSS141 |  |
| 192 | 1.23.4.1.3 | Dev: BE - input or modify IRS targets | 24h | 2009-04-17 | 2009-04-21 |  |  |  | 2009-03-27 | 2009-04-02 | 30h | 51d | 0d | start no earlier than 2009-04-17 | Justin | 24h |  | 2,760 | 2,760 |  | 251 | MDSS028 |  |
| 193 | 1.23.4.1.4 | Dev: GUI - input or modify IRS targets | 24h | 2009-04-22 | 2009-04-24 | 192 |  |  | 2009-05-07 | 2009-05-12 | 30h | 51d | 2.2d | start no earlier than 2009-04-01 | Darrell | 24h |  | 2,760 | 2,760 |  | 252 | MDSS028 |  |
| 194 | 1.23.4.1.5 | Dev: BE - Configure items relating to application rate | 24h | 2009-04-24 | 2009-04-29 | 192, 196 |  |  | 2009-04-02 | 2009-04-10 | 50h | 48.8d | 0d |  | Justin | 24h |  | 2,760 | 4,600 |  | 253 | MDSS106 |  |
| 195 | 1.23.4.1.6 | Dev: GUI - Configure items relating to application rate | 16h | 2009-04-29 | 2009-05-01 | 193, 194 |  |  | 2009-05-13 | 2009-05-15 | 20h | 48.8d |  |  | Darrell | 16h |  | 1,840 | 1,840 |  | 254 | MDSS106 |  |
| 196 | 1.23.4.1.7 | Dev: BE - IRS - CRUD | 24h | 2009-04-14 A | 2009-04-24 | 170 | 27% | 17.6h | 2009-04-14 | 2009-04-20 | 28.23h | 48.8d | 0d | start no earlier than 2009-03-23 | Justin | 24h | 6.4h | 2,760 | 2,760 | 736 | 255 | MDSS027 |  |
| 197 | 1.23.4.1.8 | Dev: GUI - IRS - CRUD | 16h | 2009-04-24 | 2009-04-28 | 196 |  |  |  |  |  | 51.8d |  | start no earlier than 2009-04-10 | Darrell | 16h |  | 1,840 |  |  | 370 | MDSS027 |  |
| 198 | 1.23.4.1.9 | Dev: IRS - dynamic query | 40h | 2009-04-27 | 2009-05-01 | 156, 14 |  |  | 2009-04-10 | 2009-04-17 | 40h | 0d |  | start no earlier than 2009-03-16 | Naifeh | 40h |  |  | 3,680 |  | 257 | MDSS132 |  |
| 199 | 1.23.4.2 | **MDSS Stabilisation** | 22d? | 2009-04-23 | 2009-05-22 |  |  |  |  |  |  | 8d |  |  |  | 440h |  | 36,800 |  |  | 381 |  |  |
| 200 | 1.23.4.2.1 | Ticket resolution | 120h | 2009-05-04 | 2009-05-22 |  |  |  |  |  |  | 1d | 0d | start no earlier than 2009-05-04 | Darrell; Justin | 240h |  | 27,600 |  |  | 382 |  |  |
| 201 | 1.23.4.2.2 | Dev: maintain catalogues | 28.23h | 2009-04-23 | 2009-04-28 | 164 |  |  | 2009-03-27 | 2009-04-02 | 28.23h | 18.53d | 0d | start no earlier than 2009-04-23 | Nathan [85%] | 24h |  | 2,760 | 2,760 |  | 219 | MDSS103 |  |
| 202 | 1.23.4.2.3 | Dev: Configure system variables | 18.82h | 2009-04-28 | 2009-04-30 | 52, 201 |  |  | 2009-03-23 | 2009-03-24 | 8h | 18.53d | 0d |  | Nathan [85%] | 16h |  | 1,840 | 920 |  | 218 | MDSS109 | 1 day |
| 203 | 1.23.4.2.4 | Dev: Epi week - set or change | 16h | 2009-04-28 | 2009-04-29 | 191 |  |  | 2009-03-09 | 2009-03-12 | 18.82h | 23d | 0d | start no earlier than 2009-03-17 | Eric | 16h |  |  | 1,840 |  | 220 | MDSS119 | 2 days |
| 204 | 1.23.4.2.5 | Dev: define season start and end dates | 16h | 2009-04-30 | 2009-05-01 | 203 |  |  | 2009-03-12 | 2009-03-16 | 18.82h | 23d | 0d | start no earlier than 2009-04-13 | Eric | 16h |  |  | 1,840 |  | 221 | MDSS127 | 2 days |
| 205 | 1.23.4.2.6 | Finalise export/import routines | 40h | 2009-05-04 | 2009-05-08 | 204 |  |  |  |  |  | 23d | 0d |  | Eric | 40h |  |  |  |  | 383 |  |  |
| 206 | 1.23.4.2.7 | Dev: create synonyms for imported Geo entities | 32h | 2009-05-11 | 2009-05-14 | 207, 205 |  |  | 2009-03-13 | 2009-03-19 | 32h | 23d | 0d |  | Eric | 32h |  |  | 3,680 |  | 223 | MDSS112 |  |
| 207 | 1.23.4.2.8 | Dev: User Admin Screen for account management | 3.53d? | 2009-04-30 | 2009-05-06 | 42, 202 |  |  | 2009-04-06 | 2009-04-08 | 3d? | 18.53d | 0d | start no earlier than 2009-03-17 | Nathan [85%] | 24h |  | 2,760 |  |  | 224 |  | 3 days |
| 208 | 1.23.4.2.9 | Dev: user Admin Screen for Role assignment | 2.35d? | 2009-05-06 | 2009-05-08 | 207 |  |  | 2009-04-02 | 2009-04-06 | 2.35d? | 18.53d | 0d | start no earlier than 2009-03-06 | Nathan [85%] | 16h |  | 1,840 | 1,840 |  | 225 | MDSS142 | 2 days |
| 209 | 1.23.4.2.10 | Dev: Add localisable character attributes | 16h | 2009-05-15 | 2009-05-18 | 208, 206 |  |  | 2009-04-06 | 2009-04-09 | 18.82h | 23d | 0d |  | Eric | 16h |  |  | 1,840 |  | 226 | SYS01-1 |  |
| 210 | 1.23.4.3 | **Larvaciding** | 4.5d | 2009-05-29 | 2009-06-04 |  |  |  | 2009-04-10 | 2009-04-17 | 4.71d | 4.5d |  |  |  | 32h |  | 3,680 | 3,680 |  | 258 |  |  |
| 211 | 1.23.4.3.1 | Dev: BE - larviciding - CRUD | 16h | 2009-05-29 | 2009-06-02 | 229 |  |  |  |  |  | 3.5d | 0d | start no earlier than 2009-05-22 | Justin | 16h |  | 1,840 |  |  | 371 | MDSS031 |  |
| 212 | 1.23.4.3.2 | Dev: GUI - larviciding - CRUD | 16h | 2009-06-03 | 2009-06-04 | 211, 230 |  |  | 2009-04-10 | 2009-04-17 | 37.65h | 4.75d | 0d | start no earlier than 2009-03-17 | Darrell | 16h |  | 1,840 | 3,680 |  | 259 | MDSS031 | 8 days |

| ID | WBS | Task | Type | Duration | Start | Finish | Predecessors | Complete | Baseline start | Baseline finish | Baseline duration | Total slack | Free slack | Constraint | Resources | Work | Cost | Baseline cost | Text4 | Text1 | Text2 | Text3 |
| --- | --- | --- | --- | --- | --- | --- | --- | --- | --- | --- | --- | --- | --- | --- | --- | --- | --- | --- | --- | --- | --- | --- |
| 213 | 1.23.4.4 | **ITN** |  | 22.5d | 2009-06-02 | 2009-07-02 |  |  | 2009-04-17 | 2009-05-22 | 25.53d | 0d |  |  |  | 216h | 11,040 | 23,000 | 260 |  |  |  |
| 214 | 1.23.4.4.1 | Dev: BE - ITN aggregated data - CRUD |  | 16h | 2009-06-02 | 2009-06-04 | 211 |  | 2009-04-17 | 2009-04-27 | 47.06h | 3.5d | 0d | start no earlier than 2009-05-22 | Justin | 16h | 1,840 | 4,600 | 261 | MDSS080 | 5 days |  |
| 215 | 1.23.4.4.2 | Dev: GUI - ITN aggregated data - CRUD |  | 16h | 2009-06-05 | 2009-06-08 | 214, 212 |  |  |  |  | 4.75d | 1.25d |  | Darrell | 16h | 1,840 |  | 372 | MDSS080 |  |  |
| 216 | 1.23.4.4.3 | Dev: ITN aggregated data - query |  | 40h | 2009-06-12 | 2009-06-18 | 231 |  | 2009-04-27 | 2009-04-28 | 8h | 0d |  | start no earlier than 2009-06-03 | Naifeh | 40h |  |  | 262 | MDSS136 |  |  |
| 217 | 1.23.4.4.4 | Dev: BE - ITN facility distribution - CRUD |  | 16h | 2009-06-12 | 2009-06-16 | 235 |  | 2009-04-28 | 2009-05-07 | 56.47h | 4.75d | 0d | start no earlier than 2009-05-22 | Justin | 16h | 1,840 | 5,520 | 263 | MDSS030 | 5 days |  |
| 218 | 1.23.4.4.5 | Dev: GUI - ITN facility distribution - CRUD |  | 16h | 2009-06-18 | 2009-06-19 | 217, 236 |  |  |  |  | 3.5d | 0d |  | Darrell | 16h | 1,840 |  | 373 | MDSS030 |  |  |
| 219 | 1.23.4.4.6 | Dev: BE - ITN community distribution - CRUD |  | 8h | 2009-06-16 | 2009-06-17 | 217 |  | 2009-05-07 | 2009-05-13 | 37.65h | 4.75d | 0d | start no earlier than 2009-05-22 | Justin | 8h | 920 | 3,680 | 264 | MDSS079 | 5 days |  |
| 220 | 1.23.4.4.7 | Dev: GUI - ITN community distribution - CRUD |  | 8h | 2009-06-22 | 2009-06-22 | 219, 218 |  |  |  |  | 3.5d | 0d |  | Darrell | 8h | 920 |  | 374 | MDSS079 |  |  |
| 221 | 1.23.4.4.8 | Dev: ITN by facility/community - query |  | 40h | 2009-06-19 | 2009-06-25 | 216 |  | 2009-05-13 | 2009-05-14 | 8h | 0d |  |  | Naifeh | 40h |  |  | 265 | MDSS135 |  |  |
| 222 | 1.23.4.4.9 | Dev: BE - ITN by household - CRUD |  | 8h | 2009-06-17 | 2009-06-18 | 219 |  | 2009-05-14 | 2009-05-22 | 47.06h | 4.75d | 0d | start no earlier than 2009-05-22 | Justin | 8h | 920 | 4,600 | 266 | MDSS082 | 5 days | 10 |
| 223 | 1.23.4.4.10 | Dev: GUI - ITN by household - CRUD |  | 8h | 2009-06-23 | 2009-06-23 | 222, 220 |  |  |  |  | 3.5d | 0d |  | Darrell | 8h | 920 |  | 375 | MDSS082 |  | 10 |
| 224 | 1.23.4.4.11 | Dev: ITN by household - query |  | 40h | 2009-06-26 | 2009-07-02 | 191, 159, 221 |  | 2009-05-04 | 2009-05-08 | 40h | 0d |  | start no earlier than 2009-04-10 | Naifeh | 40h |  | 4,600 | 267 | MDSS138 |  | 10 |
| 225 | 1.23.4.5 | **Intervention Planning** |  | 7.5d | 2009-06-04 | 2009-06-15 |  |  | 2009-04-17 | 2009-04-28 | 7.5d | 4.5d |  |  |  | 48h | 5,520 | 5,520 | 268 |  |  |  |
| 226 | 1.23.4.5.1 | Dev: BE - Intervention planning |  | 30h | 2009-06-04 | 2009-06-10 | 214 |  | 2009-04-17 | 2009-04-23 | 30h | 3.5d | 0d | start no earlier than 2009-05-22 | Justin [80%] | 24h | 2,760 | 2,760 | 269 | MDSS077 |  |  |
| 227 | 1.23.4.5.2 | Dev: GUI - Intervention planning |  | 30h | 2009-06-10 | 2009-06-15 | 226, 215 |  | 2009-04-23 | 2009-04-28 | 30h | 3.5d | 0d | start no earlier than 2009-04-16 | Darrell [80%] | 24h | 2,760 | 2,760 | 270 | MDSS077 |  |  |
| 228 | 1.23.4.6 | **IPT** |  | 31d | 2009-05-27 | 2009-07-08 |  |  | 2009-04-23 | 2009-05-28 | 25d | 0d |  |  |  | 128h | 7,360 | 14,720 | 271 |  |  |  |
| 229 | 1.23.4.6.1 | Dev: BE - IPT aggregated - CRUD |  | 20h | 2009-05-27 | 2009-05-29 | 184 |  | 2009-04-23 | 2009-04-27 | 20h | 2d | 0d | start no earlier than 2009-05-22 | Justin [80%] | 16h | 1,840 | 1,840 | 272 | MDSS069 |  |  |
| 230 | 1.23.4.6.2 | Dev: GUI - IPT aggregated - CRUD |  | 20h | 2009-05-29 | 2009-06-02 | 229, 185 |  | 2009-05-21 | 2009-05-25 | 20h | 2d | 0d |  | Darrell [80%] | 16h | 1,840 | 1,840 | 273 | MDSS069 |  |  |
| 231 | 1.23.4.6.3 | Dev: IPT aggregated - query |  | 32h | 2009-06-08 | 2009-06-11 | 230, 187 |  | 2009-04-27 | 2009-05-04 | 40h | 0d |  |  | Naifeh | 32h |  | 3,680 | 274 | MDSS131 |  |  |
| 232 | 1.23.4.6.4 | Dev: BE - IPT individual - CRUD |  | 20h | 2009-06-18 | 2009-06-22 | 222 |  | 2009-05-04 | 2009-05-07 | 20h | 4.75d | 0d | start no earlier than 2009-05-22 | Justin [80%] | 16h | 1,840 | 1,840 | 275 | MDSS081 |  | 10 |
| 233 | 1.23.4.6.5 | Dev: GUI - IPT individual - CRUD |  | 20h | 2009-06-24 | 2009-06-26 | 232, 223 |  | 2009-05-25 | 2009-05-28 | 20h | 3.5d |  |  | Darrell [80%] | 16h | 1,840 | 1,840 | 276 | MDSS081 |  | 10 |
| 234 | 1.23.4.6.6 | Dev: IPT individual - query |  | 32h | 2009-07-03 | 2009-07-08 | 233, 224 |  | 2009-05-07 | 2009-05-14 | 40h | 0d |  |  | Naifeh | 32h |  | 3,680 | 277 | MDSS130 |  | 10 |
| 235 | 1.23.5 | Dev: BE - Stock Control |  | 16h | 2009-06-10 | 2009-06-12 | 226 |  | 2009-04-20 | 2009-04-23 | 28.23h | 4.75d | 0d | start no earlier than 2009-05-22 | Justin | 16h | 1,840 | 2,760 | 278 | MDSS032 |  |  |
| 236 | 1.23.6 | Dev: GUI - Stock Control |  | 16h | 2009-06-16 | 2009-06-17 | 235, 227 |  | 2009-05-11 | 2009-05-14 | 32h | 3.5d | 0d |  | Darrell | 16h | 1,840 | 3,680 | 279 | MDSS032 |  |  |
| 237 | 2 | Dev: Backup the data and configuration file |  | 40h | 2009-05-25 | 2009-05-29 | 186 |  | 2009-05-15 | 2009-05-21 | 40h | 22d | 0d |  | Eric | 40h |  | 4,600 | 280 | MDSS065 |  |  |
| 238 | 3 | Dev: Synchronise data between systems |  | 40h | 2009-06-01 | 2009-06-05 | 237 |  |  |  |  | 23d |  |  | Eric | 40h |  |  | 384 |  |  |  |
| 239 | 4 | Dev: Select the user language | milestone | 0h | 2009-02-02 A | 2009-02-02 A |  | 100% | 2009-02-02 | 2009-02-02 | 0h |  |  |  |  |  |  |  | 281 | MDSS118 |  |  |

| ID | WBS | Task | Duration | Start | Finish | Predecessors | Complete | Baseline start | Baseline finish | Baseline duration | Constraint | Resources | Work | Actual work | Text4 | Text1 | Text3 | Text2 |
| --- | --- | --- | --- | --- | --- | --- | --- | --- | --- | --- | --- | --- | --- | --- | --- | --- | --- | --- |
| 240 | 5 | **Complete Test Cases** | 39.5d? | 2009-02-11 A | 2009-04-07 A |  | 100% | 2009-02-11 | 2009-04-01 | 35.25d? |  |  | 191.2h | 191.2h | 283 |  |  |  |
| 241 | 5.1 | **Entomology** | 3d? | 2009-03-11 A | 2009-03-13 A |  | 100% | 2009-03-17 | 2009-03-23 | 4d? |  |  | 12h | 12h | 284 |  |  |  |
| 242 | 5.1.1 | TC: Adult knock down assay | 1d? | 2009-03-11 A | 2009-03-11 A |  | 100% | 2009-03-18 | 2009-03-19 | 1d? | start no earlier than 2009-03-11 | Mike [50%] | 4h | 4h | 286 | MDSS006 |  |  |
| 243 | 5.1.2 | TC: Larvae discriminating dose assay | 1d? | 2009-03-12 A | 2009-03-12 A | 242 | 100% | 2009-03-19 | 2009-03-20 | 1d? |  | Mike [50%] | 4h | 4h | 287 | MDSS008 | 10 |  |
| 244 | 5.1.3 | TC: Efficacy assay | 1d? | 2009-03-13 A | 2009-03-13 A | 243 | 100% | 2009-03-20 | 2009-03-23 | 1d? |  | Mike [50%] | 4h | 4h | 288 | MDSS025 |  |  |
| 245 | 5.2 | **System** | 18d | 2009-02-11 A | 2009-03-06 A |  | 100% | 2009-02-11 | 2009-02-26 | 11.25d |  |  | 48h | 48h | 289 |  |  |  |
| 246 | 5.2.1 | TC: Configure system variables | 10h | 2009-02-12 A | 2009-02-13 A | 259 | 100% | 2009-02-12 | 2009-02-13 | 10h | start no earlier than 2009-02-11 | Sanika [40%] | 4h | 4h | 290 | MDSS109 |  | 1 day |
| 247 | 5.2.2 | TC: maintain catalogues | 10h | 2009-02-13 A | 2009-02-16 A | 246 | 100% | 2009-02-13 | 2009-02-16 | 10h |  | Sanika [40%] | 4h | 4h | 291 | MDSS103 |  |  |
| 248 | 5.2.3 | TC: Epi week - set or change | 10h | 2009-02-16 A | 2009-02-17 A | 247 | 100% | 2009-02-16 | 2009-02-17 | 10h |  | Sanika [40%] | 4h | 4h | 292 | MDSS119 |  | 2 days |
| 249 | 5.2.4 | TC: define season start and end dates | 10h | 2009-02-23 A | 2009-02-24 A | 248 | 100% | 2009-02-18 | 2009-02-19 | 10h | start no earlier than 2009-02-21 | Sanika [40%] | 4h | 4h | 293 | MDSS127 |  | 2 days |
| 250 | 5.2.5 | TC: enter/maintain people in the system | 10h | 2009-02-24 A | 2009-02-25 A | 249 | 100% | 2009-02-19 | 2009-02-20 | 10h | start no earlier than 2009-02-21 | Sanika [40%] | 4h | 4h | 294 | MDSS114 |  |  |
| 251 | 5.2.6 | TC: create synonyms for imported Geo entities | 10h | 2009-02-25 A | 2009-02-26 A | 250 | 100% | 2009-02-20 | 2009-02-23 | 10h |  | Sanika [40%] | 4h | 4h | 295 | MDSS112 |  |  |
| 252 | 5.2.7 | TC: User Admin Screen for account management | 10h | 2009-02-11 A | 2009-02-12 A |  | 100% | 2009-02-11 | 2009-02-12 | 10h | start no earlier than 2009-02-11 | Saul [40%] | 4h | 4h | 296 | MDSS142 |  | 3 days |
| 253 | 5.2.8 | TC: user Admin Screen for Role assignment | 10h | 2009-02-12 A | 2009-02-13 A | 252 | 100% | 2009-02-12 | 2009-02-13 | 10h | start no earlier than 2009-02-01 | Saul [40%] | 4h | 4h | 297 | MDSS144 |  | 2 days |
| 254 | 5.2.9 | TC: Change date/time format | 10h | 2009-03-02 A | 2009-03-03 A | 253 | 100% | 2009-02-19 | 2009-02-20 | 10h | start no earlier than 2009-03-02 | Saul [40%] | 4h | 4h | 301 | MDSS120 |  |  |
| 255 | 5.2.10 | TC: Change geo root | 10h | 2009-03-03 A | 2009-03-04 A | 254 | 100% | 2009-02-20 | 2009-02-23 | 10h |  | Saul [40%] | 4h | 4h | 302 | MDSS122 |  |  |
| 256 | 5.2.11 | TC: Select the user language | 10h | 2009-03-04 A | 2009-03-05 A | 255 | 100% | 2009-02-23 | 2009-02-24 | 10h |  | Saul [40%] | 4h | 4h | 303 | MDSS118 |  |  |
| 257 | 5.2.12 | TC: Change date/time format | 10h | 2009-03-05 A | 2009-03-06 A | 256 | 100% | 2009-02-25 | 2009-02-26 | 10h |  | Saul [40%] | 4h | 4h | 304 | MDSS120 |  |  |
| 258 | 5.3 | **Indicator Survey** | 1.25d | 2009-02-11 A | 2009-02-12 A |  | 100% | 2009-02-11 | 2009-02-12 | 1.25d |  |  | 4h | 4h | 305 |  |  |  |
| 259 | 5.3.1 | TC: Indicator survey - CRUD | 10h | 2009-02-11 A | 2009-02-12 A |  | 100% | 2009-02-11 | 2009-02-12 | 10h | start no earlier than 2009-02-11 | Sanika [40%] | 4h | 4h | 306 | MDSS026 |  |  |
| 260 | 5.4 | **Case Surveilance** | 154h | 2009-03-11 A | 2009-04-07 A |  | 100% | 2009-03-12 | 2009-03-25 | 68.58h |  |  | 36h | 36h | 308 |  |  |  |
| 261 | 5.4.1 | TC: aggregated cases - CRUD | 8h | 2009-03-11 A | 2009-03-12 A | 289 | 100% | 2009-03-12 | 2009-03-13 | 5.71h | start no earlier than 2009-03-10 | Dave [50%] | 4h | 4h | 309 | MDSS002 |  | 5 days |
| 262 | 5.4.2 | TC: calculate CFR | 8h | 2009-03-12 A | 2009-03-13 A | 261 | 100% | 2009-03-13 | 2009-03-16 | 5.71h |  | Dave [50%] | 4h | 4h | 310 | MDSS087 |  | 4 days |
| 263 | 5.4.3 | TC: aggregated cases - dynamic query | 8h | 2009-03-13 A | 2009-03-16 A | 262 | 100% | 2009-03-16 | 2009-03-16 | 5.71h |  | Dave [50%] | 4h | 4h | 311 | MDSS129 |  | 5 days |
| 264 | 5.4.4 | TC: Input or modify population data | 8h | 2009-03-16 A | 2009-03-17 A | 263 | 100% | 2009-03-16 | 2009-03-17 | 5.71h | start no earlier than 2009-02-01 | Dave [50%] | 4h | 4h | 312 | MDSS003 |  | 4 days |
| 265 | 5.4.5 | TC: Import population or annual growth rate data | 8h | 2009-03-17 A | 2009-03-18 A | 264 | 100% | 2009-03-17 | 2009-03-18 | 5.71h |  | Dave [50%] | 4h | 4h | 313 | MDSS083 |  |  |
| 266 | 5.4.6 | TC: input/modify outbreak thresholds | 8h | 2009-03-18 A | 2009-03-19 A | 265 | 100% | 2009-03-18 | 2009-03-18 | 5.71h |  | Dave [50%] | 4h | 4h | 314 | MDSS105 |  | 5 days |
| 267 | 5.4.7 | TC :import outbreak thresholds | 8h | 2009-03-19 A | 2009-03-20 A | 266 | 100% | 2009-03-18 | 2009-03-19 | 5.71h |  | Dave [50%] | 4h | 4h | 315 | MDSS085 |  | 5 days |
| 268 | 5.4.8 | TC: Calculate annual or seasonal population | 8h | 2009-03-20 A | 2009-03-23 A | 267 | 100% | 2009-03-19 | 2009-03-20 | 5.71h |  | Dave [50%] | 4h | 4h | 316 | MDSS073 |  | 5 days |
| 269 | 5.4.9 | TC: individual case - query | 4h | 2009-04-07 A | 2009-04-07 A |  | 100% | 2009-03-24 | 2009-03-25 | 5.71h | start no earlier than 2009-04-07 | Dave | 4h | 4h | 320 | MDSS128 |  | 5 days |

| ID | WBS | Task | Duration | Start | Finish | Predecessors | Complete | Baseline start | Baseline finish | Baseline duration | Constraint | Resources | Work | Actual work | Text4 | Text1 | Text3 | Text2 |
| --- | --- | --- | --- | --- | --- | --- | --- | --- | --- | --- | --- | --- | --- | --- | --- | --- | --- | --- |
| 270 | 5.5 | **Intervention monitoring** | 309.72h | 2009-02-11 A | 2009-04-06 A |  | 100% | 2009-02-11 | 2009-04-01 | 282.04h |  |  | 91.2h | 91.2h | 321 |  |  |  |
| 271 | 5.5.1 | **IRS** | 114h | 2009-03-16 A | 2009-04-03 A |  | 100% | 2009-03-25 | 2009-03-31 | 34.29h |  |  | 44h | 44h | 322 |  |  |  |
| 272 | 5.5.1.1 | TC: enter/maintain spray team member | 8h | 2009-03-16 A | 2009-03-16 A |  | 100% | 2009-03-25 | 2009-03-25 | 5.71h | start no earlier than 2009-03-16 | Saul [50%] | 4h | 4h | 323 | MDSS113 |  |  |
| 273 | 5.5.1.2 | TC: enter/maintain IRS teams | 8h | 2009-03-17 A | 2009-03-17 A | 272 | 100% | 2009-03-25 | 2009-03-26 | 5.71h |  | Saul [50%] | 4h | 4h | 324 | MDSS141 |  |  |
| 274 | 5.5.1.3 | TC:Indicator survey query | 8h | 2009-03-25 A | 2009-03-25 A | 268, 273 | 100% |  |  |  | start no earlier than 2009-03-25 | Dave [50%] | 4h | 4h | 307 | MDSS140 |  |  |
| 275 | 5.5.1.4 | TC: ITN aggregated data - query | 8h | 2009-03-30 A | 2009-03-30 A | 274, 157 | 100% | 2009-02-25 | 2009-02-26 | 10h | start no earlier than 2009-03-30 | Dave [50%] | 4h | 4h | 333 | MDSS136 |  |  |
| 276 | 5.5.1.5 | TC: ITN by facility - query | 8h | 2009-03-31 A | 2009-03-31 A | 275, 159 | 100% | 2009-03-02 | 2009-03-03 | 10h |  | Dave [50%] | 4h | 4h | 336 | MDSS135 |  |  |
| 277 | 5.5.1.6 | TC: ITN by community - query | 8h | 2009-04-01 A | 2009-04-01 A | 276 | 100% |  |  |  |  | Dave [50%] | 4h | 4h | 385 | MDSS137 |  |  |
| 278 | 5.5.1.7 | TC: ITN by household - query | 10h | 2009-04-02 A | 2009-04-03 A | 277 | 100% | 2009-03-05 | 2009-03-06 | 10h | start no earlier than 2009-02-09 | Sanika [40%] | 4h | 4h | 338 | MDSS138 | 10 |  |
| 279 | 5.5.1.8 | TC: individual cases - CRUD | 16h | 2009-03-24 A | 2009-03-25 A |  | 100% | 2009-03-23 | 2009-03-23 | 5.71h | finish no earlier than 2009-03-25 | Sanika [25%] | 4h | 4h | 318 | MDSS001 |  | 5 days |
| 280 | 5.5.1.9 | TC: input or modify IRS targets | 8h | 2009-03-17 A | 2009-03-17 A |  | 100% | 2009-03-26 | 2009-03-27 | 5.71h | start no earlier than 2009-03-17 | Saul [50%] | 4h | 4h | 325 | MDSS028 |  |  |
| 281 | 5.5.1.10 | TC: Configure items relating to application rate | 8h | 2009-03-18 A | 2009-03-18 A | 280 | 100% | 2009-03-27 | 2009-03-30 | 5.71h |  | Saul [50%] | 4h | 4h | 326 | MDSS106 |  |  |
| 282 | 5.5.1.11 | TC: IRS - CRUD | 8h | 2009-03-25 A | 2009-03-25 A | 281 | 100% | 2009-03-30 | 2009-03-30 | 5.71h | start no earlier than 2009-03-25 | Saul [50%] | 4h | 4h | 327 | MDSS027 |  |  |
| 283 | 5.5.2 | **Larvaciding** | 20h | 2009-02-11 A | 2009-02-13 A |  | 100% | 2009-02-11 | 2009-02-13 | 20h |  |  | 4h | 4h | 329 |  |  |  |
| 284 | 5.5.2.1 | TC: larviciding - CRUD | 20h | 2009-02-11 A | 2009-02-13 A |  | 100% | 2009-02-11 | 2009-02-13 | 20h | start no earlier than 2009-02-11 | Lars [20%] | 4h | 4h | 330 | MDSS031 |  | 8 days |
| 285 | 5.5.3 | **ITN** | 170h | 2009-02-26 A | 2009-03-27 A |  | 100% | 2009-02-23 | 2009-03-06 | 70h |  |  | 27.2h | 27.2h | 331 |  |  |  |
| 286 | 5.5.3.1 | TC: ITN aggregated data - CRUD | 10h | 2009-02-26 A | 2009-02-27 A | 251 | 100% | 2009-02-23 | 2009-02-24 | 10h |  | Sanika [40%] | 4h | 4h | 332 | MDSS080 |  | 5 days |
| 287 | 5.5.3.2 | TC: ITN facility distribution - CRUD | 10h | 2009-03-02 A | 2009-03-03 A | 286 | 100% | 2009-02-26 | 2009-02-27 | 10h |  | Sanika [40%] | 4h | 4h | 334 | MDSS030 |  | 5 days |
| 288 | 5.5.3.3 | TC: ITN community distribution - CRUD | 10h | 2009-03-03 A | 2009-03-04 A | 287 | 100% | 2009-02-27 | 2009-03-02 | 10h |  | Sanika [40%] | 4h | 4h | 335 | MDSS079 |  | 5 days |
| 289 | 5.5.3.4 | TC: ITN by household - CRUD | 10h | 2009-03-10 A | 2009-03-11 A | 288 | 100% | 2009-03-04 | 2009-03-05 | 10h | start no earlier than 2009-03-10 | Dave [40%] | 4h | 4h | 337 | MDSS082 | 10 | 5 days |
| 290 | 5.5.3.5 | TC: Change visibility of a GUI field | 8h | 2009-03-05 A | 2009-03-06 A |  | 100% |  |  |  |  | Sanika [40%] | 3.2h | 3.2h | 366 | MDSS117 |  |  |
| 291 | 5.5.3.6 | TC: calculate incidence | 8h | 2009-03-26 A | 2009-03-26 A | 282 | 100% | 2009-03-20 | 2009-03-23 | 5.71h |  | Saul [50%] | 4h | 4h | 317 | MDSS086 |  | 5 days |
| 292 | 5.5.3.7 | TC: Outbreak notification | 8h | 2009-03-27 A | 2009-03-27 A | 291 | 100% | 2009-03-23 | 2009-03-24 | 5.71h |  | Saul [50%] | 4h | 4h | 319 | MDSS124 |  | 5 days |
| 293 | 5.5.4 | **Intervention Planning** | 5.72h | 2009-04-06 A | 2009-04-06 A |  | 100% | 2009-03-31 | 2009-04-01 | 5.71h |  |  | 4h | 4h | 339 |  |  |  |
| 294 | 5.5.4.1 | TC: Intervention planning | 5.72h | 2009-04-06 A | 2009-04-06 A |  | 100% | 2009-03-31 | 2009-04-01 | 5.71h | start no earlier than 2009-04-06 | Dave [69.9%] | 4h | 4h | 340 | MDSS077 |  |  |

| ID | WBS | Task | Type | Duration | Start | Finish | Predecessors | Complete | Baseline start | Baseline finish | Baseline duration | Total slack | Free slack | Constraint | Resources | Work | Actual work | Cost | Baseline cost | Text4 | Text1 | Text3 |
| --- | --- | --- | --- | --- | --- | --- | --- | --- | --- | --- | --- | --- | --- | --- | --- | --- | --- | --- | --- | --- | --- | --- |
| 295 | 5.5.5 | **IPT** |  | 40h | 2009-02-13 A | 2009-02-20 A |  | 100% | 2009-02-13 | 2009-02-20 | 40h |  |  |  |  | 8h | 8h |  |  | 341 |  |  |
| 296 | 5.5.5.1 | TC: IPT aggregated - CRUD |  | 20h | 2009-02-13 A | 2009-02-17 A | 284 | 100% | 2009-02-13 | 2009-02-17 | 20h |  |  |  | Lars [20%] | 4h | 4h |  |  | 342 | MDSS069 |  |
| 297 | 5.5.5.2 | TC: IPT individual - CRUD |  | 20h | 2009-02-18 A | 2009-02-20 A | 296 | 100% | 2009-02-18 | 2009-02-20 | 20h |  |  |  | Lars [20%] | 4h | 4h |  |  | 343 | MDSS081 | 10 |
| 298 | 5.5.6 | **Stock Control** |  | 20h | 2009-02-20 A | 2009-02-24 A |  | 100% | 2009-02-20 | 2009-02-24 | 20h |  |  |  |  | 4h | 4h |  |  | 344 |  |  |
| 299 | 5.5.6.1 | TC: Stock Control |  | 20h | 2009-02-20 A | 2009-02-24 A | 297 | 100% | 2009-02-20 | 2009-02-24 | 20h |  |  |  | Lars [20%] | 4h | 4h |  |  | 345 | MDSS032 |  |
| 300 | 6 | Create standard queries and reports |  | 114.28h | 2009-05-11 | 2009-05-29 | 294 |  | 2009-04-08 | 2009-04-29 | 114.28h | 27.71d |  | start no earlier than 2009-05-10 | Marlize [70%] | 80h |  |  |  | 346 |  |  |
| 301 | 7 | Receive historical entomological data | milestone | 8h | 2009-05-20 | 2009-05-20 |  |  | 2009-05-04 | 2009-05-04 | 8h | 33d | 0d | start no earlier than 2009-05-20 | MRC | 8h |  |  |  | 347 |  |  |
| 302 | 8 | Import historical entomological data |  | 8h | 2009-05-21 | 2009-05-21 | 301 |  | 2009-05-05 | 2009-05-05 | 8h | 33d |  |  |  |  |  |  |  | 348 |  |  |
| 303 | 9 | Receive all historical IRS data | milestone | 8h | 2009-05-20 | 2009-05-20 |  |  | 2009-05-04 | 2009-05-04 | 8h | 33d | 0d | start no earlier than 2009-05-20 |  |  |  |  |  | 349 |  |  |
| 304 | 10 | Import all historical IRS data |  | 8h | 2009-05-21 | 2009-05-21 | 303 |  | 2009-05-05 | 2009-05-05 | 8h | 33d |  |  |  |  |  |  |  | 350 |  |  |
| 305 | 11 | Order MDSS Hardware | milestone | 0h | 2009-04-13 | 2009-04-13 |  |  | 2009-02-02 | 2009-02-02 | 0h | 62d |  | start no earlier than 2009-04-13 | Mike |  |  |  |  | 351 |  |  |
| 306 | 12 | Appoint MDSS Administrators | milestone | 0h | 2009-06-01 | 2009-06-01 |  |  | 2009-02-02 | 2009-02-02 | 0h | 27d |  | start no earlier than 2009-06-01 | Mike |  |  |  |  | 352 |  |  |
| 307 | 13 | Complete system translation into Portuguese |  | 20d | 2009-05-01 | 2009-05-28 |  |  | 2009-04-06 | 2009-05-01 | 20d | 28d |  | start no earlier than 2009-05-01 | Mike [5%] | 8h |  |  |  | 353 |  |  |
| 308 | 14 | Dev: Installation (minimal or full) |  | 40h | 2009-06-22 | 2009-06-29 | 232 |  | 2009-05-15 | 2009-05-22 | 40h | 6.25d |  | start no earlier than 2009-06-15 | Justin | 40h |  | 4,600 | 4,600 | 354 | SYS12 |  |
| 309 | 15 | Complete Test and Fix Cycle |  | 20d | 2009-05-18 | 2009-06-12 |  |  | 2009-05-18 | 2009-06-12 | 20d | 15d | 0d | start no earlier than 2009-05-18 |  |  |  |  |  | 355 |  |  |
| 310 | 16 | Implementation planning |  | 16h | 2009-06-15 | 2009-06-16 | 309 |  | 2009-06-15 | 2009-06-16 | 16h | 15d |  |  |  | 16h |  |  |  | 356 |  |  |
| 311 | 17 | Project Buffer |  | 10d | 2009-06-16 | 2009-06-29 |  |  | 2009-06-16 | 2009-06-29 | 10d | 5d | 0d | start no earlier than 2009-06-16 |  | 80h |  |  |  | 357 |  |  |
| 312 | 18 | Ready for Pilot Roll-Out | milestone | 8h | 2009-06-30 | 2009-06-30 | 311 |  | 2009-06-30 | 2009-06-30 | 8h | 5d |  |  |  |  |  |  |  | 358 |  |  |
